# Hardboard phase 1 1-2-15

How a schedule from MS Project changed from version to version. A marks actual dates.

## Version 1 (data date 2015-05-20, saved 2015-06-03, file Hardboard phase 3 (5-29-15).mpp)

Note of the change: Initial commit. Transfered to git.

| ID | WBS | Task | Duration | Start | Finish | Predecessors | Complete | Total float |
| --- | --- | --- | --- | --- | --- | --- | --- | --- |
| 1 | 1 | **Hardboard Phase 3** | 71.88d? | 2015-05-18 A | 2015-09-16 |  | 7% | 0d |
| 2 | 1.1 | **Design documents** | 8.75d | 2015-05-18 A | 2015-06-12 |  | 61% | 0d |
| 3 |  | Use cases | 30h | 2015-05-18 A | 2015-05-29 |  | 75% | 2.5d |
| 4 |  | Sequence Diagrams | 30h | 2015-05-30 A | 2015-06-07 | 3 | 50% | 0.62d |
| 5 |  | Class Diagrams | 10h | 2015-06-08 A | 2015-06-12 | 4 | 50% | 0d |
| 6 | 1.2 | **Production Schedule** | 8.38d | 2015-06-15 | 2015-06-25 | 2 |  | 0d |
| 7 | 1.2.1 | **Production Window** | 1.88d | 2015-06-15 | 2015-06-16 |  |  | 0d |
| 8 |  | Create controls | 15h | 2015-06-15 | 2015-06-16 |  |  | 0d |
| 9 | 1.2.2 | **Press configuration** | 4d | 2015-06-16 | 2015-06-22 | 7 |  | 0d |
| 10 |  | Plate configuration manual editing | 20h | 2015-06-16 | 2015-06-19 |  |  | 0d |
| 11 |  | Rough item list to run | 12h | 2015-06-19 | 2015-06-22 | 10 |  | 0d |
| 12 |  | Testing | 20h | 2015-06-22 | 2015-06-25 | 9 |  | 0d |
| 13 | 1.3 | **Update Coating Schedule** | 19.75d | 2015-06-25 | 2015-07-23 | 6 |  | 0d |
| 14 |  | Running totals of commonly used WiP items | 30h | 2015-06-25 | 2015-07-01 |  |  | 0d |
| 15 |  | Schedule paint trial | 15h | 2015-07-01 | 2015-07-02 | 14 |  | 0d |
| 16 |  | Add production time option for schedule in place of units | 20h | 2015-07-03 | 2015-07-07 | 15 |  | 0d |
| 17 |  | Testing | 15h | 2015-07-07 | 2015-07-09 | 16 |  | 0d |
| 18 | 1.3.5 | **Warehouse Tracking** | 5d | 2015-07-09 | 2015-07-16 | 17 |  | 0d |
| 19 |  | Auto tracking of WiP inventory from estimated production | 20h | 2015-07-09 | 2015-07-13 |  |  | 0d |
| 20 |  | Marking warehouse stock to be purged | 10h | 2015-07-13 | 2015-07-15 | 19 |  | 0d |
| 21 |  | Testing | 10h | 2015-07-15 | 2015-07-16 | 20 |  | 0d |
| 22 | 1.3.6 | **Production** | 4.75d | 2015-07-16 | 2015-07-23 | 18 |  | 0d |
| 23 |  | Efficiency tracking from standards | 20h | 2015-07-16 | 2015-07-20 |  |  | 0d |
| 24 |  | Set machine conflicts | 10h | 2015-07-20 | 2015-07-22 | 23 |  | 0d |
| 25 |  | Testing | 8h | 2015-07-22 | 2015-07-23 | 24 |  | 0d |
| 26 | 1.4 | **Update LumberTrack interface** | 3.62d? | 2015-07-23 | 2015-07-28 | 13 |  | 0d |
| 27 |  | Write nightly exports | 15h? | 2015-07-23 | 2015-07-24 |  |  | 0d |
| 28 |  | Update products to use new product code and dimentions | 8h | 2015-07-27 | 2015-07-27 | 27 |  | 0d |
| 29 |  | Testing | 6h | 2015-07-28 | 2015-07-28 | 28 |  | 0d |
| 30 | 1.5 | **Schedule Generation** | 14.75d | 2015-07-28 | 2015-08-24 | 26 |  | 0d |
| 31 | 1.5.1 | **Priority setting of the following values:** | 11d | 2015-07-28 | 2015-08-18 |  |  | 0d |
| 32 |  | Sales prediction | 6h | 2015-07-28 | 2015-07-29 |  |  | 0d |
| 33 |  | Shake texture only on Friday | 8h | 2015-07-29 | 2015-07-30 | 32 |  | 0d |
| 34 |  | 10 day turnover on new orders | 20h | 2015-07-30 | 2015-08-03 | 33 |  | 0d |
| 35 |  | Items should be made in decreasing width | 8h | 2015-08-04 | 2015-08-04 | 34 |  | 0d |
| 36 |  | Run unprimed before primed | 15h | 2015-08-05 | 2015-08-06 | 35 |  | 0d |
| 37 |  | Lam line is not run with first pass | 15h | 2015-08-06 | 2015-08-14 | 36 |  | 0d |
| 38 |  | Waste is kept within minimum and maximum values | 8h | 2015-08-14 | 2015-08-17 | 37 |  | 0d |
| 39 |  | Prioritize WiP item use that are marked "purge" | 8h | 2015-08-17 | 2015-08-18 | 38 |  | 0d |
| 40 |  | Testing | 30h | 2015-08-18 | 2015-08-24 | 31 |  | 0d |
| 41 | 1.6 | **Program Manual** | 16.62d | 2015-08-24 | 2015-09-16 | 30 |  | 0d |
| 42 | 1.6.1 | **Scope indentification** | 1.25d | 2015-08-24 | 2015-08-25 |  |  | 0d |
| 43 |  | Identify tasks that the user will perform | 10h | 2015-08-24 | 2015-08-25 |  |  | 0d |
| 44 | 1.6.2 | **Content** | 13.12d | 2015-08-27 | 2015-09-15 | 50 |  | 0d |
| 45 |  | Rough draft | 60h | 2015-08-27 | 2015-09-07 | 50 |  | 0d |
| 46 |  | Final document revision | 30h | 2015-09-09 | 2015-09-15 | 48 |  | 0d |
| 47 | 1.6.3 | **Images** | 1.88d | 2015-09-07 | 2015-09-09 | 45 |  | 0d |
| 48 |  | Capture/Editing | 15h | 2015-09-07 | 2015-09-09 |  |  | 0d |
| 49 | 1.6.4 | **Layout** | 15.38d | 2015-08-25 | 2015-09-16 |  |  | 0d |
| 50 |  | Template creation | 10h | 2015-08-25 | 2015-08-26 | 42 |  | 0d |
| 51 |  | Revision | 8h | 2015-09-15 | 2015-09-16 | 46 |  | 0d |

## Version 2 (data date 2015-06-12, saved 2015-09-23, file Hardboard phase 3 (9-18-15).mpp)

Note of the change: Initial commit. Transfered to git.

Last finish 2015-09-16 → 2015-09-25 (+9d). Complete tasks 0 → 38.

Added:

| ID | Task | Duration | Start | Finish | Predecessors |
| --- | --- | --- | --- | --- | --- |
| 7 | Add press shift configuration | 10h | 2015-06-15 A | 2015-06-16 A |  |
| 11 | Schedule pait trial (Manual or selected) | 8h | 2015-06-18 A | 2015-06-19 A |  |
| 12 | Set max number of plate changes per week | 2h | 2015-06-19 A | 2015-06-19 A | 11 |
| 13 | Set day(s) of week plate changes may happen | 4h | 2015-06-19 A | 2015-06-19 A | 12 |
| 17 | **Press Schedule requested changes** | 2.5d | 2015-06-15 A | 2015-06-17 A |  |
| 18 | Create excel export for press schedule | 20h | 2015-06-15 A | 2015-06-17 A |  |

Changed:

| ID | Task | Start | Finish | Duration | Complete | Total float | Predecessors | Other |
| --- | --- | --- | --- | --- | --- | --- | --- | --- |
| 1 | **Hardboard Phase 3** |  | 2015-09-16 → 2015-09-25 (+9d) | 71.88d? → 79.5d | 7% → 97% |  |  |  |
| 2 | **Design documents** |  | 2015-06-12 A |  | 61% → 100% | 0d → none |  |  |
| 3 | Use cases |  | 2015-05-29 A |  | 75% → 100% | 2.5d → none |  |  |
| 4 | Sequence Diagrams |  | 2015-06-07 A |  | 50% → 100% | 0.62d → none |  |  |
| 5 | Class Diagrams |  | 2015-06-12 A |  | 50% → 100% | 0d → none |  |  |
| 6 | **Production Schedule** | 2015-06-15 A | 2015-06-25 → 2015-06-30 A (+5d) | 8.38d → 11.38d | 0% → 100% | 0d → none |  |  |
| 8 | **Production Window** | 2015-06-15 → 2015-06-16 A (+1d) | 2015-06-16 → 2015-06-18 A (+2d) |  | 0% → 100% | 0d → none | none → 7 |  |
| 9 | Create controls | 2015-06-15 → 2015-06-16 A (+1d) | 2015-06-16 → 2015-06-18 A (+2d) |  | 0% → 100% | 0d → none |  |  |
| 10 | **Press configuration** | 2015-06-16 → 2015-06-18 A (+2d) | 2015-06-22 → 2015-06-25 A (+3d) | 4d → 5.75d | 0% → 100% | 0d → none |  |  |
| 14 | Plate configuration manual editing | 2015-06-16 → 2015-06-19 A (+3d) | 2015-06-19 → 2015-06-24 A (+5d) |  | 0% → 100% | 0d → none | none → 13 |  |
| 15 | Rough item list to run | 2015-06-19 → 2015-06-24 A (+5d) | 2015-06-22 → 2015-06-25 A (+3d) |  | 0% → 100% | 0d → none |  |  |
| 16 | Testing | 2015-06-22 → 2015-06-25 A (+3d) | 2015-06-25 → 2015-06-30 A (+5d) |  | 0% → 100% | 0d → none |  |  |
| 19 | **Update Coating Schedule** | 2015-06-25 → 2015-06-30 A (+5d) | 2015-07-23 → 2015-07-27 A (+4d) | 19.75d → 19.12d | 0% → 100% | 0d → none |  |  |
| 20 | Running totals of commonly used WiP items | 2015-06-25 → 2015-06-30 A (+5d) | 2015-07-01 → 2015-07-06 A (+5d) |  | 0% → 100% | 0d → none |  |  |
| 21 | Schedule paint trial (Manual or selected item) | 2015-07-01 → 2015-07-06 A (+5d) | 2015-07-02 → 2015-07-07 A (+5d) | 15h → 10h | 0% → 100% | 0d → none |  | was named Schedule paint trial |
| 22 | Add production time option for schedule in place of units | 2015-07-03 → 2015-07-07 A (+4d) | 2015-07-07 → 2015-07-09 A (+2d) |  | 0% → 100% | 0d → none |  |  |
| 23 | Testing | 2015-07-07 → 2015-07-09 A (+2d) | 2015-07-09 → 2015-07-13 A (+4d) |  | 0% → 100% | 0d → none |  |  |
| 24 | **Warehouse Tracking** | 2015-07-09 → 2015-07-13 A (+4d) | 2015-07-16 → 2015-07-20 A (+4d) |  | 0% → 100% | 0d → none |  |  |
| 25 | Auto tracking of WiP inventory from estimated production | 2015-07-09 → 2015-07-13 A (+4d) | 2015-07-13 → 2015-07-16 A (+3d) |  | 0% → 100% | 0d → none |  |  |
| 26 | Marking warehouse stock to be purged | 2015-07-13 → 2015-07-16 A (+3d) | 2015-07-15 → 2015-07-17 A (+2d) |  | 0% → 100% | 0d → none |  |  |
| 27 | Testing | 2015-07-15 → 2015-07-17 A (+2d) | 2015-07-16 → 2015-07-20 A (+4d) |  | 0% → 100% | 0d → none |  |  |
| 28 | **Production** | 2015-07-16 → 2015-07-20 A (+4d) | 2015-07-23 → 2015-07-27 A (+4d) |  | 0% → 100% | 0d → none |  |  |
| 29 | Efficiency tracking from standards | 2015-07-16 → 2015-07-20 A (+4d) | 2015-07-20 → 2015-07-23 A (+3d) |  | 0% → 100% | 0d → none |  |  |
| 30 | Set machine conflicts | 2015-07-20 → 2015-07-23 A (+3d) | 2015-07-22 → 2015-07-24 A (+2d) |  | 0% → 100% | 0d → none |  |  |
| 31 | Testing | 2015-07-22 → 2015-07-24 A (+2d) | 2015-07-23 → 2015-07-27 A (+4d) |  | 0% → 100% | 0d → none |  |  |
| 32 | **Update LumberTrack interface** | 2015-07-23 → 2015-07-27 A (+4d) | 2015-07-28 → 2015-07-31 (+3d) | 3.62d? → 3.62d | 0% → 38% | 0d → 36.62d |  |  |
| 33 | Write nightly exports | 2015-07-23 → 2015-07-27 (+4d) | 2015-07-24 → 2015-07-29 (+5d) | 15h? → 15h |  | 0d → 38.38d |  |  |
| 34 | Update products to use new product code and dimentions | 2015-07-27 → 2015-07-29 A (+2d) | 2015-07-27 → 2015-07-30 A (+3d) |  | 0% → 100% | 0d → none |  |  |
| 35 | Testing | 2015-07-28 → 2015-07-30 A (+2d) | 2015-07-28 → 2015-07-31 (+3d) |  | 0% → 50% | 0d → 36.62d |  |  |
| 36 | **Schedule Generation** | 2015-07-28 → 2015-07-31 A (+3d) | 2015-08-24 → 2015-09-03 A (+10d) | 14.75d → 20d | 0% → 100% | 0d → none |  |  |
| 37 | **Priority setting of the following values:** | 2015-07-28 → 2015-07-31 A (+3d) | 2015-08-18 → 2015-08-24 A (+6d) | 11d → 12.5d | 0% → 100% | 0d → none |  |  |
| 38 | Sales prediction | 2015-07-28 → 2015-07-31 A (+3d) | 2015-07-29 → 2015-07-31 A (+2d) |  | 0% → 100% | 0d → none |  |  |
| 39 | Shake texture only on Friday | 2015-07-29 → 2015-07-31 A (+2d) | 2015-07-30 → 2015-08-03 A (+4d) |  | 0% → 100% | 0d → none |  |  |
| 40 | 10 day turnover on new orders | 2015-07-30 → 2015-08-03 A (+4d) | 2015-08-03 → 2015-08-06 A (+3d) |  | 0% → 100% | 0d → none |  |  |
| 41 | Items should be made in decreasing width | 2015-08-04 → 2015-08-06 A (+2d) | 2015-08-04 → 2015-08-13 A (+9d) |  | 0% → 100% | 0d → none |  |  |
| 42 | Run unprimed before primed | 2015-08-05 → 2015-08-13 A (+8d) | 2015-08-06 → 2015-08-17 A (+11d) |  | 0% → 100% | 0d → none |  |  |
| 43 | Lam line is not run with first pass | 2015-08-06 → 2015-08-17 A (+11d) | 2015-08-14 → 2015-08-19 A (+5d) |  | 0% → 100% | 0d → none |  |  |
| 44 | Waste is kept within minimum and maximum values | 2015-08-14 → 2015-08-19 A (+5d) | 2015-08-17 → 2015-08-21 A (+4d) | 8h → 20h | 0% → 100% | 0d → none |  |  |
| 45 | Prioritize WiP item use that are marked "purge" | 2015-08-17 → 2015-08-21 A (+4d) | 2015-08-18 → 2015-08-24 A (+6d) |  | 0% → 100% | 0d → none |  |  |
| 46 | Testing | 2015-08-18 → 2015-08-24 A (+6d) | 2015-08-24 → 2015-09-03 A (+10d) | 30h → 60h | 0% → 100% | 0d → none |  |  |
| 47 | **Program Manual** | 2015-08-24 → 2015-09-03 A (+10d) | 2015-09-16 → 2015-09-25 A (+9d) |  | 0% → 100% | 0d → none |  |  |
| 48 | **Scope indentification** | 2015-08-24 → 2015-09-03 A (+10d) | 2015-08-25 → 2015-09-04 A (+10d) |  | 0% → 100% | 0d → none |  |  |
| 49 | Identify tasks that the user will perform | 2015-08-24 → 2015-09-03 A (+10d) | 2015-08-25 → 2015-09-04 A (+10d) |  | 0% → 100% | 0d → none |  |  |
| 50 | **Content** | 2015-08-27 → 2015-09-07 A (+11d) | 2015-09-15 → 2015-09-24 A (+9d) |  | 0% → 100% | 0d → none |  |  |
| 51 | Rough draft | 2015-08-27 → 2015-09-07 A (+11d) | 2015-09-07 → 2015-09-17 A (+10d) |  | 0% → 100% | 0d → none |  |  |
| 52 | Final document revision | 2015-09-09 → 2015-09-21 A (+12d) | 2015-09-15 → 2015-09-24 A (+9d) |  | 0% → 100% | 0d → none |  |  |
| 53 | **Images** | 2015-09-07 → 2015-09-17 A (+10d) | 2015-09-09 → 2015-09-18 A (+9d) |  | 0% → 100% | 0d → none |  |  |
| 54 | Capture/Editing | 2015-09-07 → 2015-09-17 A (+10d) | 2015-09-09 → 2015-09-18 A (+9d) |  | 0% → 100% | 0d → none |  |  |
| 55 | **Layout** | 2015-08-25 → 2015-09-04 A (+10d) | 2015-09-16 → 2015-09-25 A (+9d) |  | 0% → 100% | 0d → none |  |  |
| 56 | Template creation | 2015-08-25 → 2015-09-04 A (+10d) | 2015-08-26 → 2015-09-07 A (+12d) |  | 0% → 100% | 0d → none |  |  |
| 57 | Revision | 2015-09-15 → 2015-09-24 A (+9d) | 2015-09-16 → 2015-09-25 A (+9d) |  | 0% → 100% | 0d → none |  |  |
